| uid | wbsOrder | name | start | finish | notes | actualStart | actualFinish | percentComplete | dependencies | milestone |
| --- | --- | --- | --- | --- | --- | --- | --- | --- | --- | --- |
| 1 | 1 | CR-751(GRS JSON スキーマの自己説明)の適用 | 2026-10-15T02:00:00 | 2026-10-15T03:04:00 | 済み。始まり 02:00 は当てた体の土台 43b7315a のコミットの時刻、終わり 03:04 は dist の作り直し 102a8474 の時刻。統合の枝に在り、一括の GT-2 を待つ。 | 2026-10-15T02:00:00 | 2026-10-15T03:04:00 | 100 |  |  |
| 2 | 2 | CR-754〜757(設定パネル・タイムゾーン・ダミー実績・全体シフト)の残りの裁定 | 2026-10-15T06:45:00 | 2026-10-15T21:15:00 | 起草の席が問う 11 節の残り。利用者の時間帯で 1 時間。波 B と波 C はこれを待つ。時間帯の外で答えが出れば、波 B はそれだけ早まる。 |  |  | 0 |  |  |
| 3 | 3 | 新しい不具合と改善点の聞き取り(DFC-2600〜) | 2026-10-15T21:15:00 | 2026-10-15T23:15:00 | 聞き取りの席は動いている(始まりの時刻は測っていないので実績は書かない)。利用者の時間帯で 2 時間。 |  |  | 0 |  |  |
| 4 | 4 | CR-753(Ctrl ドラッグの写しを移動と同じ所へ)の実装 | 2026-10-15T05:00:00 | 2026-10-15T08:15:00 | 見積: CR-753 の 9 節 2.5 時間 + JDG-2069(A)で 4.1 節を入れて 4 時間 = 6.5 時間 x 0.5。仕様・コードの体と、仕様だけを読む試験の体。 |  |  | 0 |  |  |
| 5 | 5 | 工程の強制の道具(push の見張り・OneDrive の断り・検査 78〜80)の実装 | 2026-10-15T05:00:00 | 2026-10-15T09:00:00 | 大きさの段 M(4 時間)。見積の本文は無い。 |  |  | 0 |  |  |
| 6 | 6 | JDG-2071(仕様書が正)の食い違いの調べ | 2026-10-15T05:00:00 | 2026-10-15T07:00:00 | 調べの席は動いている(始まりの時刻は測っていない)。残りを大きさの段 S で置いた。 |  |  | 0 |  |  |
| 7 | 7 | CR-740(範囲選択中の下の絵の覚え置き)の実装 | 2026-10-15T05:00:00 | 2026-10-15T09:30:00 | 見積: CR-740 の 12 節 9 時間 x 0.5。測り(10.1 節、2 つのブラウザ)を含む。 |  |  | 0 |  |  |
| 8 | 8 | CR-752(公開名の呼び方と直す案の行の鍵)の仕様反映 | 2026-10-15T09:00:00 | 2026-10-15T10:15:00 | 見積: CR-752 の 12 節 2.5 時間 x 0.5。席の数を 5 に保つため、席3 の道具の後に置いた。 |  |  | 0 |  |  |
| 9 | 9 | CR-758(依存線とマーカーの干渉解消)の実装 | 2026-10-15T05:00:00 | 2026-10-15T09:15:00 | 見積: CR-758 の 14 節 7.5 時間 + 見本 50 の数え直し 1 時間 = 8.5 時間 x 0.5。 |  |  | 0 |  |  |
| 10 | 10 | 波 A(CR-753・740・752・758)の合流と確かめ | 2026-10-15T10:15:00 | 2026-10-15T11:15:00 | 合流 1 本 15 分 x 4。GT-2 はここでは回さない(一括の GT-2 は非 AI の直しが全部入った後)。 |  |  | 0 | 4 1 0 7, 7 1 0 7, 8 1 0 7, 9 1 0 7 |  |
| 11 | 11 | 未検討 40 行(DFC-611・2560〜2569 ほか)のトリアージ | 2026-10-15T08:15:00 | 2026-10-15T12:15:00 | 台帳の提案だけを書く。大きさの段 M。AI 連携の DFC-2214・2215 は除く。 |  |  | 0 |  |  |
| 12 | 12 | 罠の束(DFC-544・547・548・549)の実装 | 2026-10-15T09:30:00 | 2026-10-15T13:30:00 | 大きさの段 M。 |  |  | 0 |  |  |
| 13 | 13 | 用語集の JSON 化(DFC-2175)の仕様と実装 | 2026-10-15T09:15:00 | 2026-10-15T13:15:00 | 大きさの段 M。 |  |  | 0 |  |  |
| 14 | 14 | JDG-2071 の食い違いの再検討(仕様とコードのどちらを正とするか) | 2026-10-15T07:00:00 | 2026-10-15T11:00:00 | 大きさの段 M。 |  |  | 0 |  |  |
| 15 | 15 | T-064(公開の名 479 の呼び方)の書き起こしと再検討 | 2026-10-15T11:00:00 | 2026-10-15T23:00:00 | JDG-2071 の 1 の残り。479 名を 1 時間に 60 名ほど書き起こして 8 時間、コードと違う名の再検討 4 時間。 |  |  | 0 | 14 1 0 7 |  |
| 16 | 16 | JDG-2071 の規則と検査(仕様に合わせてコードを作る)の実装 | 2026-10-15T11:00:00 | 2026-10-15T15:00:00 | 大きさの段 M。 |  |  | 0 |  |  |
| 17 | 17 | 試験待ち 7 行(DFC-550・567・641 ほか)の仕様だけを読む試験 | 2026-10-15T15:00:00 | 2026-10-15T19:00:00 | 大きさの段 M。 |  |  | 0 |  |  |
| 18 | 18 | 仕様待ちの残り(DFC-560・631・1063〜1073 ほか約 19 行)の CR の起草 | 2026-10-15T13:15:00 | 2026-10-15T17:15:00 | 仕様待ち 36 行から CR-740〜758 と聞き取りの行(DFC-2515〜2526)を除いた残り。大きさの段 M。 |  |  | 0 |  |  |
| 19 | 19 | DFC-730(GP-1)の実装 | 2026-10-15T13:30:00 | 2026-10-15T15:30:00 | 大きさの段 S。 |  |  | 0 |  |  |
| 20 | 20 | 実装待ちの残り(DFC-464・532〜562 ほか約 20 行)の実装 | 2026-10-15T12:15:00 | 2026-10-15T20:15:00 | 実装待ち 37 行から罠・DFC-730・DFC-2517 と CR に入った行を除いた残り。大きさの段 L。 |  |  | 0 |  |  |
| 21 | 21 | CR-755(タイムゾーンの略称と夏時間)の実装 | 2026-10-15T21:15:00 | 2026-10-16T04:15:00 | 見積: 14 時間 x 0.5。CR-751 の後(済み)。 |  |  | 0 | 10 1 0 7, 2 1 0 7 |  |
| 22 | 22 | CR-756(分単位のダミー実績)の実装 | 2026-10-15T21:15:00 | 2026-10-16T00:45:00 | 見積: 6.75 時間 x 0.5(15 分へ切り上げ)。 |  |  | 0 | 10 1 0 7, 2 1 0 7 |  |
| 23 | 23 | CR-757(全体日程のシフト)の実装 | 2026-10-15T21:15:00 | 2026-10-16T04:00:00 | 見積: 13.5 時間 x 0.5(15 分へ切り上げ)。 |  |  | 0 | 10 1 0 7, 2 1 0 7 |  |
| 24 | 24 | 波 B(CR-755・756・757)の合流と確かめ | 2026-10-16T04:15:00 | 2026-10-16T05:15:00 | 合流 3 本と、波 C の幅の測りの下ごしらえ。 |  |  | 0 | 21 1 0 7, 22 1 0 7, 23 1 0 7 |  |
| 25 | 25 | CR-754(設定パネルの閉じる・幅・並び)と DFC-2517(1 行)の実装 | 2026-10-16T05:15:00 | 2026-10-16T10:45:00 | 見積: 11 時間 x 0.5。パネルの幅は波 B が足した行の後に測るので最後。DFC-2517 は 1 行で同じ体が当てる。 |  |  | 0 | 24 1 0 7 |  |
| 26 | 26 | 波 C(CR-754・DFC-2517)の合流と確かめ | 2026-10-16T10:45:00 | 2026-10-16T11:15:00 | 合流 1 本。 |  |  | 0 | 25 1 0 7 |  |
| 27 | 27 | W4(アダプタ層の分割)の前半 CR-578→579→580 の実装 | 2026-10-16T11:15:00 | 2026-10-16T19:15:00 | 大きさの段 L(8 時間)。波の CR と同じファイルを割るので波 C の後。 |  |  | 0 | 26 1 0 7 |  |
| 28 | 28 | W4 の後半(CR-581 の後半と properties-panel)の実装 | 2026-10-16T19:15:00 | 2026-10-17T03:15:00 | 大きさの段 L。 |  |  | 0 |  |  |
| 29 | 29 | W5(異常系 DFC-586 ほか)の仕様 | 2026-10-17T03:15:00 | 2026-10-17T11:15:00 | 大きさの段 L。JDG-1479 により W4 の後。 |  |  | 0 |  |  |
| 30 | 30 | W5(異常系 DFC-922 ほか)の実装と試験 | 2026-10-17T11:15:00 | 2026-10-17T19:15:00 | 大きさの段 L。 |  |  | 0 |  |  |
| 31 | 31 | W4・W5(リファクタ)の合流と確かめ | 2026-10-17T19:15:00 | 2026-10-17T20:15:00 |  |  |  | 0 | 30 1 0 7 |  |
| 32 | 32 | トリアージで出た直しの実装 | 2026-10-15T19:00:00 | 2026-10-16T03:00:00 | 仮置き: 件数がまだ分からない。大きさの段 L。 |  |  | 0 | 11 1 0 7 |  |
| 33 | 33 | 聞き取り分(DFC-2600〜)の CR の起草 | 2026-10-15T23:15:00 | 2026-10-16T03:15:00 | 仮置き: 件数がまだ分からない。大きさの段 M。 |  |  | 0 | 3 1 0 7 |  |
| 34 | 34 | 聞き取り分(DFC-2600〜)の CR の実装 | 2026-10-16T03:15:00 | 2026-10-16T11:15:00 | 仮置き: 前の聞き取り 11 件は CR 4 本・見積 45.25 時間になった。ここでは段 L 1 つだけを置いた。 |  |  | 0 |  |  |
| 35 | 35 | 仕様待ちの残りの CR の実装 | 2026-10-16T04:00:00 | 2026-10-16T12:00:00 | 大きさの段 L。 |  |  | 0 |  |  |
| 36 | 36 | 並行の仕事の合流と台帳の締め | 2026-10-17T20:15:00 | 2026-10-17T21:15:00 | 非 AI の直しが全部入ったことを台帳で数える。 |  |  | 0 |  |  |
| 37 | 37 | 1 枚のチェックリスト(user-checklist)の刷り直し | 2026-10-17T21:15:00 | 2026-10-17T23:15:00 | docs/review/user-checklist-2026-10-15.md を、入った直しに合わせて刷り直す。 |  |  | 0 |  |  |
| 38 | 38 | OneDrive を止める(利用者に頼む) | 2026-10-17T21:15:00 | 2026-10-17T21:15:00 | JDG-2086。GT-2 の前。 |  |  | 0 | 36 1 0 7, 31 1 0 7 | True |
| 39 | 39 | 一括の GT-2(非 AI の直しが全部入った sha) | 2026-10-17T23:15:00 | 2026-10-18T01:15:00 | 前の巡の GT-2 は試験だけで 468 秒、時間切れの再走を見込んで 2 時間。 |  |  | 0 | 38 1 0 7 |  |
| 40 | 40 | refactor と main へ push・Pages の配備 | 2026-10-18T01:15:00 | 2026-10-18T01:15:00 | GT-2 <sha> passed の行を確かめてから。 |  |  | 0 |  | True |
| 41 | 41 | 1 枚のチェックリストを実物で触る | 2026-10-18T09:00:00 | 2026-10-18T11:00:00 | 1 度だけ。 |  |  | 0 | 40 1 0 7 |  |
| 42 | 42 | チェックリストで出た直しの実装 | 2026-10-18T11:00:00 | 2026-10-18T15:00:00 | 仮置き。大きさの段 M。 |  |  | 0 | 41 1 0 7 |  |
| 43 | 43 | チェックリストの直しの GT-2 と push | 2026-10-18T15:00:00 | 2026-10-18T16:00:00 |  |  |  | 0 | 42 1 0 7 |  |
| 44 | 44 | 正式公開の判断(JDG-1740) | 2026-10-18T16:00:00 | 2026-10-18T16:00:00 | 解明・リファクタ・分刻みの日程が終わったことを確かめる。 |  |  | 0 | 43 1 0 7 | True |
| 45 | 45 | CR-695(対話欄の廃止)の実装 | 2026-10-18T01:15:00 | 2026-10-18T09:15:00 | 大きさの段 L。一括の GT-2 の後。 |  |  | 0 | 40 1 0 7 |  |
| 46 | 46 | CR-697(取次が口と鍵を覚える)の実装 | 2026-10-18T01:15:00 | 2026-10-18T09:15:00 | 大きさの段 L。 |  |  | 0 | 40 1 0 7 |  |
| 47 | 47 | DFC-2214・2215(AM-19 の説明)の仕様と実装 | 2026-10-18T01:15:00 | 2026-10-18T05:15:00 | 大きさの段 M。 |  |  | 0 | 40 1 0 7 |  |
| 48 | 48 | AI 連携の合流と GT-2 | 2026-10-18T16:00:00 | 2026-10-18T18:00:00 |  |  |  | 0 | 45 1 0 7, 46 1 0 7, 47 1 0 7 |  |
| 49 | 49 | AI 連携の push・計画の終わり | 2026-10-18T18:00:00 | 2026-10-18T18:00:00 |  |  |  | 0 |  | True |
